# studentsarthi wbs

Schedule from MS Project, 2026-04-06 to 2026-11-18, A marks actual dates.

## Calendars

- Standard: Mon-Fri 08:00-12:00, 13:00-17:00; Sat-Sun off.

## Resources

| Resource |
| --- |
| Team 1 |
| Mahesh |
| aakash |
| Pappu |
| Raman |
| alexi |
| komal |
| Team |
| Team 2 |
| LALAN |
| Team 3 |
| Team 4 |
| Team 5 |
| Team 6 |
| Team 7 |

## Schedule

| ID | WBS | Task | Duration | Start | Finish | Predecessors | Complete | Remaining | Baseline start | Baseline finish | Baseline duration | Total slack | Free slack | Resources | Work | Actual work |
| --- | --- | --- | --- | --- | --- | --- | --- | --- | --- | --- | --- | --- | --- | --- | --- | --- |
| 1 | 1 | **Project: StudentSarthi Platform** | 163d | 2026-04-06 A | 2026-11-18 |  | 36% | 104.9d | 2026-04-05 | 2026-04-05 | 1d | 0d |  |  | 2544h | 923.76h |
| 2 | 1.1 | **Project Initiation** | 18d | 2026-04-06 A | 2026-04-29 |  | 75% | 4.5d | 2026-04-06 | 2026-04-29 | 18d | 0d |  | Team 1 | 288h | 216h |
| 3 | 1.1.1 | Define Project Objectives | 3d | 2026-04-06 A | 2026-04-08 |  | 75% | 0.75d | 2026-04-06 | 2026-04-08 | 3d | 1.5d | 0d | Mahesh | 24h | 18h |
| 4 | 1.1.2 | Develop Project Brief | 2d | 2026-04-09 A | 2026-04-10 | 3 | 75% | 0.5d | 2026-04-09 | 2026-04-10 | 2d | 1.5d | 0d | aakash | 16h | 12h |
| 5 | 1.1.3 | Identify Stakeholders | 2d | 2026-04-13 A | 2026-04-14 | 4 | 75% | 0.5d | 2026-04-13 | 2026-04-14 | 2d | 2.25d | 0d | Pappu | 16h | 12h |
| 6 | 1.1.4 | Develop Business Case | 3d | 2026-04-15 A | 2026-04-17 | 5 | 75% | 0.75d | 2026-04-15 | 2026-04-17 | 3d | 3.75d | 0d | Raman | 24h | 18h |
| 7 | 1.1.5 | Create PID (Project Initiation Document) | 5d | 2026-04-20 A | 2026-04-24 | 6 | 75% | 1.25d | 2026-04-20 | 2026-04-24 | 5d | 2.25d | 0d | alexi | 40h | 30h |
| 8 | 1.1.6 | Approval of Initiation Stage | 3d | 2026-04-27 A | 2026-04-29 | 7 | 75% | 0.75d | 2026-04-27 | 2026-04-29 | 3d | 0d |  | komal | 24h | 18h |
| 9 | 1.2 | **Planning Stage** | 19d | 2026-04-30 A | 2026-05-26 | 8 | 50% | 9.5d | 2026-04-30 | 2026-05-26 | 19d | 0d |  | Team 2 | 304h | 152h |
| 10 | 1.2.1 | Define MVP Scope | 3d | 2026-04-30 A | 2026-05-04 |  | 50% | 1.5d | 2026-04-30 | 2026-05-04 | 3d | 1.5d | 0d | aakash | 24h | 12h |
| 11 | 1.2.2 | Develop Project Plan | 3d | 2026-05-05 A | 2026-05-07 | 10 | 50% | 1.5d | 2026-05-05 | 2026-05-07 | 3d | 1.5d | 0d | Pappu | 24h | 12h |
| 12 | 1.2.3 | Develop Risk Management Strategy | 3d | 2026-05-08 A | 2026-05-12 | 11 | 50% | 1.5d | 2026-05-08 | 2026-05-12 | 3d | 1.5d | 0d | LALAN | 24h | 12h |
| 13 | 1.2.4 | Develop Communication Plan | 3d | 2026-05-13 A | 2026-05-15 | 12 | 50% | 1.5d | 2026-05-13 | 2026-05-15 | 3d | 1.5d | 0d | Raman | 24h | 12h |
| 14 | 1.2.5 | Develop Quality Management Strategy | 3d | 2026-05-18 A | 2026-05-20 | 13 | 50% | 1.5d | 2026-05-18 | 2026-05-20 | 3d | 1d | 0d | komal | 24h | 12h |
| 15 | 1.2.6 | Develop Configuration Management Plan | 2d | 2026-05-21 A | 2026-05-22 | 14 | 50% | 1d | 2026-05-21 | 2026-05-22 | 2d | 1d | 0d | aakash | 16h | 8h |
| 16 | 1.2.7 | Stage Approval (Planning Sign-off) | 2d | 2026-05-25 A | 2026-05-26 | 15 | 50% | 1d | 2026-05-25 | 2026-05-26 | 2d | 0d |  | Pappu | 16h | 8h |
| 17 | 1.3 | **Requirements & Analysis** | 20d | 2026-05-27 A | 2026-06-23 | 16 | 25% | 15d | 2026-05-27 | 2026-06-23 | 20d | 0d |  | Team 3 | 320h | 80h |
| 18 | 1.3.1 | Gather User Requirements | 6d | 2026-05-27 A | 2026-06-03 |  | 25% | 4.5d | 2026-05-27 | 2026-06-03 | 6d | 1.25d | 0d | Pappu | 48h | 12h |
| 19 | 1.3.2 | Define Functional Requirements | 5d | 2026-06-04 A | 2026-06-10 | 18 | 25% | 3.75d | 2026-06-04 | 2026-06-10 | 5d | 1d | 0d | komal | 40h | 10h |
| 20 | 1.3.3 | Define Non-Functional Requirements | 4d | 2026-06-11 A | 2026-06-16 | 19 | 25% | 3d | 2026-06-11 | 2026-06-16 | 4d | 0.75d | 0d | aakash | 32h | 8h |
| 21 | 1.3.4 | Create Product Breakdown Structure (PBS) | 3d | 2026-06-17 A | 2026-06-19 | 20 | 25% | 2.25d | 2026-06-17 | 2026-06-19 | 3d | 0.5d | 0d | alexi | 24h | 6h |
| 22 | 1.3.5 | validate Requirements with Stakeholders | 2d | 2026-06-22 A | 2026-06-23 | 21 | 25% | 1.5d | 2026-06-22 | 2026-06-23 | 2d | 0d |  | Raman | 16h | 4h |
| 23 | 1.4 | **Design Stage** | 24d | 2026-06-24 A | 2026-07-27 | 22 | 25% | 18d | 2026-06-24 | 2026-07-27 | 24d | 0d |  | Team 4 | 384h | 96h |
| 24 | 1.4.1 | System Architecture Design | 7d | 2026-06-24 A | 2026-07-02 |  | 25% | 5.25d | 2026-06-24 | 2026-07-02 | 7d | 1.5d | 0d | Pappu | 56h | 14h |
| 25 | 1.4.2 | User Flow Design | 6d | 2026-07-03 A | 2026-07-10 | 24 | 25% | 4.5d | 2026-07-03 | 2026-07-10 | 6d | 1.25d | 0d | aakash | 48h | 12h |
| 26 | 1.4.3 | UI Wireframes & Prototype | 5d | 2026-07-13 A | 2026-07-17 | 25 | 25% | 3.75d | 2026-07-13 | 2026-07-17 | 5d | 1d | 0d | alexi | 40h | 10h |
| 27 | 1.4.4 | Database Design | 4d | 2026-07-20 A | 2026-07-23 | 26 | 25% | 3d | 2026-07-20 | 2026-07-23 | 4d | 0.5d | 0d | komal | 32h | 8h |
| 28 | 1.4.5 | Design Review & Approval | 2d | 2026-07-24 A | 2026-07-27 | 27 | 25% | 1.5d | 2026-07-24 | 2026-07-27 | 2d | 0d |  | Raman | 16h | 4h |

| ID | WBS | Task | Duration | Start | Finish | Predecessors | Complete | Remaining | Baseline start | Baseline finish | Baseline duration | Total slack | Free slack | Resources | Work | Actual work |
| --- | --- | --- | --- | --- | --- | --- | --- | --- | --- | --- | --- | --- | --- | --- | --- | --- |
| 29 | 1.5 | **Development Stage** | 28d | 2026-07-28 A | 2026-09-03 | 28 | 26% | 20.75d | 2026-07-28 | 2026-09-03 | 28d | 0d |  | Team 5 | 448h | 116h |
| 30 | 1.5.1 | Student Registration Module | 8d | 2026-07-28 A | 2026-08-06 |  | 25% | 6d | 2026-07-28 | 2026-08-06 | 8d | 1.5d | 0d | Pappu | 64h | 16h |
| 31 | 1.5.2 | Employer Job Posting Module | 6d | 2026-08-07 A | 2026-08-14 | 30 | 25% | 4.5d | 2026-08-07 | 2026-08-14 | 6d | 1.5d | 0d | aakash | 48h | 12h |
| 32 | 1.5.3 | Job Search & Application Module | 5d | 2026-08-17 A | 2026-08-21 | 31 | 30% | 3.5d | 2026-08-17 | 2026-08-21 | 5d | 1d | 0d | alexi | 40h | 12h |
| 33 | 1.5.4 | System Integration | 4d | 2026-08-24 A | 2026-08-27 | 32 | 25% | 3d | 2026-08-24 | 2026-08-27 | 4d | 0.75d | 0d | komal | 32h | 8h |
| 34 | 1.5.5 | Code Review & Quality Check | 3d | 2026-08-28 A | 2026-09-01 | 33 | 25% | 2.25d | 2026-08-28 | 2026-09-01 | 3d | 0.5d | 0d | Raman | 24h | 6h |
| 35 | 1.5.6 | Development Stage Review | 2d | 2026-09-02 A | 2026-09-03 | 34 | 25% | 1.5d | 2026-09-02 | 2026-09-03 | 2d | 0d |  | LALAN | 16h | 4h |
| 36 | 1.6 | **Testing Stage** | 33d | 2026-09-04 A | 2026-10-20 | 35 | 25% | 24.75d | 2026-09-04 | 2026-10-20 | 33d | 0d |  | Team 6 | 528h | 132h |
| 37 | 1.6.1 | Test Planning | 8d | 2026-09-04 A | 2026-09-15 |  | 25% | 6d | 2026-09-04 | 2026-09-15 | 8d | 1.75d | 0d | Pappu | 64h | 16h |
| 38 | 1.6.2 | Unit Testing | 7d | 2026-09-16 A | 2026-09-24 | 37 | 25% | 5.25d | 2026-09-16 | 2026-09-24 | 7d | 1.5d | 0d | LALAN | 56h | 14h |
| 39 | 1.6.3 | System Testing | 6d | 2026-09-25 A | 2026-10-02 | 38 | 25% | 4.5d | 2026-09-25 | 2026-10-02 | 6d | 1.25d | 0d | alexi | 48h | 12h |
| 40 | 1.6.4 | User Acceptance Testing (UAT) | 5d | 2026-10-05 A | 2026-10-09 | 39 | 25% | 3.75d | 2026-10-05 | 2026-10-09 | 5d | 1d | 0d | aakash | 40h | 10h |
| 41 | 1.6.5 | Bug Fixing & Retesting | 4d | 2026-10-12 A | 2026-10-15 | 40 | 25% | 3d | 2026-10-12 | 2026-10-15 | 4d | 0.75d | 0d | komal | 32h | 8h |
| 42 | 1.6.6 | Testing Sign-off | 3d | 2026-10-16 A | 2026-10-20 | 41 | 25% | 2.25d | 2026-10-16 | 2026-10-20 | 3d | 0d |  | Pappu | 24h | 6h |
| 43 | 1.7 | **Project & closure** | 21d | 2026-10-21 A | 2026-11-18 | 42 | 44% | 11.71d | 2026-10-21 | 2026-11-26 | 27d | 0d |  | Team 7 | 272h | 131.76h |
| 44 | 1.7.1 | Final System Deployment | 3d | 2026-10-21 A | 2026-10-23 |  | 42% | 1.75d | 2026-10-21 | 2026-10-27 | 5d | 3d | 2d | Pappu | 24h | 10h |
| 45 | 1.7.2 | User Training / Handover | 2d | 2026-10-28 A | 2026-10-29 | 44 | 50% | 1d | 2026-10-28 | 2026-11-02 | 4d | 3d | 2d | komal | 16h | 8h |
| 46 | 1.7.3 | Collect User Feedback | 3d | 2026-11-03 A | 2026-11-05 | 45 | 33% | 2d | 2026-11-03 | 2026-11-06 | 4d | 1.75d | 1d | LALAN | 24h | 8h |
| 47 | 1.7.4 | Final Documentation | 2d | 2026-11-09 A | 2026-11-10 | 46 | 38% | 1.25d | 2026-11-09 | 2026-11-11 | 3d | 2d | 1d | alexi | 16h | 6h |
| 48 | 1.7.5 | Lessons Learned Report | 2d | 2026-11-12 A | 2026-11-13 | 47 | 50% | 1d | 2026-11-12 | 2026-11-17 | 4d | 2.75d | 2d | aakash | 16h | 8h |
| 49 | 1.7.6 | Project Closure Report | 1d | 2026-11-18 A | 2026-11-18 | 48 | 75% | 0.25d | 2026-11-18 | 2026-11-20 | 3d | 0d |  | Mahesh | 8h | 6h |
